# Enterprise ICT System Rollout-Sample Project Schedule

Schedule from MS Project, 2025-01-02 to 2025-04-22.

## Calendars

- Standard: Mon-Fri 08:00-12:00, 13:00-17:00; Sat-Sun off.

## Resources

| Resource |
| --- |
| Project Coordinator |
| Business Analyst |
| System Developer |
| QA Tester |

## Schedule

| ID | WBS | Task | Type | Duration | Start | Finish | Predecessors | Baseline start | Baseline finish | Baseline duration | Total slack | Resources | Work |
| --- | --- | --- | --- | --- | --- | --- | --- | --- | --- | --- | --- | --- | --- |
| 1 | 1 | **ENTERPRISE ICT SYSTEM ROLLOUT** |  | 79d | 2025-01-02 | 2025-04-22 |  | 2025-01-02 | 2025-01-02 | 1d? | 0d |  | 1792h |
| 2 | 1.1 | **PHASE 1** |  | 10d | 2025-01-02 | 2025-01-15 |  | 2025-01-02 | 2025-01-14 | 9d | 0d |  | 160h |
| 3 | 1.1.1 | **PROJECT INITIATION** |  | 10d | 2025-01-02 | 2025-01-15 |  | 2025-01-02 | 2025-01-14 | 9d | 0d | Project Coordinator | 160h |
| 4 | 1.1.1.1 | Project Kick-Off Meeting |  | 1d | 2025-01-02 | 2025-01-02 |  | 2025-01-02 | 2025-01-02 | 1d | 0d | Project Coordinator | 8h |
| 5 | 1.1.1.2 | Letter of Award (LOA) Received |  | 1d | 2025-01-03 | 2025-01-03 | 4 | 2025-01-02 | 2025-01-02 | 1d | 0d | Project Coordinator | 8h |
| 6 | 1.1.1.3 | Project Charter drafted |  | 3d | 2025-01-06 | 2025-01-08 | 5 | 2025-01-03 | 2025-01-07 | 3d | 0d | Project Coordinator | 24h |
| 7 | 1.1.1.4 | Project Charter approve - MILESTONE | milestone | 0d | 2025-01-08 | 2025-01-08 | 6 | 2025-01-07 | 2025-01-07 | 0d | 0d | Project Coordinator |  |
| 8 | 1.1.1.5 | Stakeholder register created |  | 2d | 2025-01-09 | 2025-01-10 | 7 | 2025-01-08 | 2025-01-09 | 2d | 0d | Project Coordinator | 16h |
| 9 | 1.1.1.6 | Communication plan established |  | 2d | 2025-01-13 | 2025-01-14 | 8 | 2025-01-10 | 2025-01-13 | 2d | 0d | Project Coordinator | 16h |
| 10 | 1.1.1.7 | Weekly status report #1 distribute to stakeholders |  | 1d | 2025-01-15 | 2025-01-15 | 9 | 2025-01-14 | 2025-01-14 | 1d | 0d | Project Coordinator | 8h |
| 11 | 1.2 | **PHASE 2** |  | 14d | 2025-01-16 | 2025-02-04 |  | 2025-01-15 | 2025-02-03 | 14d | 0d |  | 144h |
| 12 | 1.2.1 | **Requirements and Planning** |  | 14d | 2025-01-16 | 2025-02-04 |  | 2025-01-15 | 2025-02-03 | 14d | 0d |  | 144h |
| 13 | 1.2.1.1 | BRS sessions conducted with client stakeholders |  | 2d | 2025-01-16 | 2025-01-17 | 10 | 2025-01-15 | 2025-01-16 | 2d | 0d | Project Coordinator; Business Analyst | 32h |
| 14 | 1.2.1.2 | BRS document drafted |  | 3d | 2025-01-20 | 2025-01-22 | 13 | 2025-01-17 | 2025-01-21 | 3d | 0d | Business Analyst | 24h |
| 15 | 1.2.1.3 | BRS reviewed and signed off by client - MILESTONE | milestone | 0d | 2025-01-22 | 2025-01-22 | 14 | 2025-01-21 | 2025-01-21 | 0d | 0d | Project Coordinator; Business Analyst |  |
| 16 | 1.2.1.4 | SRS drafted |  | 4d | 2025-01-23 | 2025-01-28 | 15 | 2025-01-22 | 2025-01-27 | 4d | 0d | Business Analyst | 32h |
| 17 | 1.2.1.5 | SRS reviewed and approved |  | 2d | 2025-01-29 | 2025-01-30 | 16 | 2025-01-28 | 2025-01-29 | 2d | 0d | Project Coordinator; Business Analyst | 32h |
| 18 | 1.2.1.6 | Master project schedule developed and baseline - MILESTONE | milestone | 0d | 2025-01-30 | 2025-01-30 | 17 | 2025-01-29 | 2025-01-29 | 0d | 0d | Project Coordinator |  |
| 19 | 1.2.1.7 | Risk Register established |  | 2d | 2025-01-31 | 2025-02-03 | 18 | 2025-01-30 | 2025-01-31 | 2d | 0d | Project Coordinator | 16h |
| 20 | 1.2.1.8 | Weekly status report #2 distributed to stakeholders |  | 1d | 2025-02-04 | 2025-02-04 | 19 | 2025-02-03 | 2025-02-03 | 1d | 0d | Project Coordinator | 8h |
| 21 | 1.3 | **PHASE 3** |  | 22d | 2025-02-05 | 2025-03-06 |  | 2025-02-04 | 2025-03-05 | 22d | 0d |  | 944h |
| 22 | 1.3.1 | **System Development and Intergration** |  | 22d | 2025-02-05 | 2025-03-06 |  | 2025-02-04 | 2025-03-05 | 22d | 0d |  | 944h |
| 23 | 1.3.1.1 | **Workstream A - Portal and User Management** |  | 21d | 2025-02-05 | 2025-03-05 |  | 2025-02-04 | 2025-03-04 | 21d | 0d |  | 328h |
| 24 | 1.3.1.1.1 | Portal architecture design |  | 5d | 2025-02-05 | 2025-02-11 | 20 | 2025-02-04 | 2025-02-10 | 5d | 0d | Project Coordinator; System Developer | 80h |
| 25 | 1.3.1.1.2 | User Management module development |  | 10d | 2025-02-12 | 2025-02-25 | 24 | 2025-02-11 | 2025-02-24 | 10d | 0d | System Developer | 80h |
| 26 | 1.3.1.1.3 | Portal module development |  | 10d | 2025-02-05 | 2025-02-18 | 24SS | 2025-02-04 | 2025-02-17 | 10d | 5d | System Developer | 80h |
| 27 | 1.3.1.1.4 | Internal system testing |  | 5d | 2025-02-26 | 2025-03-04 | 25, 26 | 2025-02-25 | 2025-03-03 | 5d | 0d | QA Tester; System Developer | 80h |
| 28 | 1.3.1.1.5 | Weekly status report #3 distributed to stakeholders |  | 1d | 2025-03-05 | 2025-03-05 | 27 | 2025-03-04 | 2025-03-04 | 1d | 0d | Project Coordinator | 8h |

| ID | WBS | Task | Type | Duration | Start | Finish | Predecessors | Baseline start | Baseline finish | Baseline duration | Total slack | Free slack | Resources | Work |
| --- | --- | --- | --- | --- | --- | --- | --- | --- | --- | --- | --- | --- | --- | --- |
| 29 | 1.3.1.2 | **Workstream B - Data Migration** |  | 13d | 2025-02-05 | 2025-02-21 |  | 2025-02-04 | 2025-02-20 | 13d | 8d |  |  | 208h |
| 30 | 1.3.1.2.1 | Data extraction from legacy system |  | 5d | 2025-02-05 | 2025-02-11 | 20 | 2025-02-04 | 2025-02-10 | 5d | 8d | 0d | Business Analyst; System Developer | 80h |
| 31 | 1.3.1.2.2 | Data cleansing and validation scripts |  | 5d | 2025-02-12 | 2025-02-18 | 30 | 2025-02-11 | 2025-02-17 | 5d | 8d | 0d | Business Analyst; System Developer | 80h |
| 32 | 1.3.1.2.3 | Data migration dry run |  | 3d | 2025-02-19 | 2025-02-21 | 31 | 2025-02-18 | 2025-02-20 | 3d | 8d | 0d | Business Analyst; System Developer | 48h |
| 33 | 1.3.1.2.4 | Data migration sign-off - MILESTONE | milestone | 0d | 2025-02-21 | 2025-02-21 | 32 | 2025-02-20 | 2025-02-20 | 0d | 8d |  | Business Analyst; Project Coordinator |  |
| 34 | 1.3.1.3 | **Workstream C - System Intergration** |  | 19d | 2025-02-05 | 2025-03-03 |  | 2025-02-04 | 2025-02-28 | 19d | 2d |  |  | 280h |
| 35 | 1.3.1.3.1 | Intergration test enviroment setup |  | 3d | 2025-02-05 | 2025-02-07 | 20 | 2025-02-04 | 2025-02-06 | 3d | 2d | 0d | System Developer | 24h |
| 36 | 1.3.1.3.2 | Intergration testing Phase 1 |  | 7d | 2025-02-10 | 2025-02-18 | 35 | 2025-02-07 | 2025-02-17 | 7d | 2d | 0d | QA Tester; System Developer | 112h |
| 37 | 1.3.1.3.3 | Intergration testing Phase 2 |  | 7d | 2025-02-19 | 2025-02-27 | 36 | 2025-02-18 | 2025-02-26 | 7d | 2d | 0d | QA Tester; System Developer | 112h |
| 38 | 1.3.1.3.4 | Intergration sign-off |  | 2d | 2025-02-28 | 2025-03-03 | 37 | 2025-02-27 | 2025-02-28 | 2d | 2d |  | Project Coordinator; System Developer | 32h |
| 39 | 1.3.1.4 | **Workstream D - Infrastructure and Deployment Planning** |  | 15d | 2025-02-05 | 2025-02-25 |  | 2025-02-04 | 2025-02-24 | 15d | 6d |  |  | 120h |
| 40 | 1.3.1.4.1 | Server provisioning |  | 5d | 2025-02-05 | 2025-02-11 | 20 | 2025-02-04 | 2025-02-10 | 5d | 6d | 0d | Project Coordinator | 40h |
| 41 | 1.3.1.4.2 | Enviroment configuration |  | 5d | 2025-02-12 | 2025-02-18 | 40 | 2025-02-11 | 2025-02-17 | 5d | 6d | 0d | Project Coordinator | 40h |
| 42 | 1.3.1.4.3 | Deployment checklist prepared |  | 3d | 2025-02-19 | 2025-02-21 | 41 | 2025-02-18 | 2025-02-20 | 3d | 6d | 0d | Project Coordinator | 24h |
| 43 | 1.3.1.4.4 | Deployment readiness confirm |  | 2d | 2025-02-24 | 2025-02-25 | 42 | 2025-02-21 | 2025-02-24 | 2d | 6d |  | Project Coordinator | 16h |
| 44 | 1.3.1.5 | Weekly status report #4 distribute to stakeholders |  | 1d | 2025-03-06 | 2025-03-06 | 28, 33, 38, 43 | 2025-03-05 | 2025-03-05 | 1d | 0d |  | Project Coordinator | 8h |
| 45 | 1.4 | **PHASE 4** |  | 25d | 2025-03-07 | 2025-04-10 |  | 2025-03-06 | 2025-04-09 | 25d | 0d |  |  | 424h |
| 46 | 1.4.1 | **Testing and Acceptance** |  | 25d | 2025-03-07 | 2025-04-10 |  | 2025-03-06 | 2025-04-09 | 25d | 0d |  |  | 424h |
| 47 | 1.4.1.1 | UAT plan prepare and distributed to client |  | 2d | 2025-03-07 | 2025-03-10 | 44 | 2025-03-06 | 2025-03-07 | 2d | 0d |  | Project Coordinator | 16h |
| 48 | 1.4.1.2 | UAT conducted with client stakeholders |  | 7d | 2025-03-11 | 2025-03-19 | 47 | 2025-03-10 | 2025-03-18 | 7d | 0d |  | Project Coordinator; QA Tester | 112h |
| 49 | 1.4.1.3 | UAT defects logged and resolved |  | 5d | 2025-03-20 | 2025-03-26 | 48 | 2025-03-19 | 2025-03-25 | 5d | 0d |  | Project Coordinator; QA Tester; System Developer | 120h |
| 50 | 1.4.1.4 | UAT sign-off by client -MILESTONE | milestone | 0d | 2025-03-26 | 2025-03-26 | 49 | 2025-03-25 | 2025-03-25 | 0d | 0d |  | Project Coordinator |  |
| 51 | 1.4.1.5 | FAT conducted with client stakeholders |  | 5d | 2025-03-27 | 2025-04-02 | 50 | 2025-03-26 | 2025-04-01 | 5d | 0d |  | Project Coordinator; QA Tester | 80h |
| 52 | 1.4.1.6 | FAT defects logged and resolved |  | 3d | 2025-04-03 | 2025-04-07 | 51 | 2025-04-02 | 2025-04-04 | 3d | 0d |  | Project Coordinator; QA Tester; System Developer | 72h |
| 53 | 1.4.1.7 | FAT sign-off by client - MILESTONE | milestone | 0d | 2025-04-07 | 2025-04-07 | 52 | 2025-04-04 | 2025-04-04 | 0d | 0d |  | Project Coordinator |  |
| 54 | 1.4.1.8 | Go-Live readiness checklist completed |  | 2d | 2025-04-08 | 2025-04-09 | 53 | 2025-04-07 | 2025-04-08 | 2d | 0d |  | Project Coordinator | 16h |
| 55 | 1.4.1.9 | weekly status report #5 distributed to stakeholders |  | 1d | 2025-04-10 | 2025-04-10 | 54 | 2025-04-09 | 2025-04-09 | 1d | 0d |  | Project Coordinator | 8h |

| ID | WBS | Task | Type | Duration | Start | Finish | Predecessors | Baseline start | Baseline finish | Baseline duration | Total slack | Resources | Work |
| --- | --- | --- | --- | --- | --- | --- | --- | --- | --- | --- | --- | --- | --- |
| 56 | 1.5 | **PHASE 5** |  | 8d | 2025-04-10 | 2025-04-22 |  | 2025-04-09 | 2025-04-21 | 8d | 0d |  | 120h |
| 57 | 1.5.1 | **Deployment and Close-out** |  | 8d | 2025-04-10 | 2025-04-22 |  | 2025-04-09 | 2025-04-21 | 8d | 0d |  | 120h |
| 58 | 1.5.1.1 | Go-Live deployment executed - MILESTONE | milestone | 0d | 2025-04-10 | 2025-04-10 | 55 | 2025-04-09 | 2025-04-09 | 0d | 0d | Project Coordinator |  |
| 59 | 1.5.1.2 | Post-deployment monitoring |  | 5d | 2025-04-11 | 2025-04-17 | 58 | 2025-04-10 | 2025-04-16 | 5d | 3d | Project Coordinator | 40h |
| 60 | 1.5.1.3 | Handover documentation prepared |  | 3d | 2025-04-11 | 2025-04-15 | 58 | 2025-04-10 | 2025-04-14 | 3d | 0d | Project Coordinator | 24h |
| 61 | 1.5.1.4 | Client training conducted |  | 2d | 2025-04-16 | 2025-04-17 | 60 | 2025-04-15 | 2025-04-16 | 2d | 0d | Business Analyst; Project Coordinator | 32h |
| 62 | 1.5.1.5 | Project close-out report submitted |  | 2d | 2025-04-18 | 2025-04-21 | 61 | 2025-04-17 | 2025-04-18 | 2d | 0d | Project Coordinator | 16h |
| 63 | 1.5.1.6 | Weekly status report #6 distributed to stakeholders |  | 1d | 2025-04-22 | 2025-04-22 | 62 | 2025-04-21 | 2025-04-21 | 1d | 0d | Project Coordinator | 8h |
| 64 | 1.5.1.7 | Project formally close -MILESTONE | milestone | 0d | 2025-04-22 | 2025-04-22 | 63 | 2025-04-21 | 2025-04-21 | 0d | 0d | Project Coordinator |  |
